# Seruni Waterflood (SIMULASI)

Schedule from MS Project XML, 2026-09-01 to 2027-02-26.

## Schedule

| ID | WBS | Task | Start | Finish |
| --- | --- | --- | --- | --- |
| 1 | 1 | **Mobilisasi & site preparation** | 2026-09-01 | 2026-10-10 |
| 2 | 1.1 | Mobilisasi alat & personel | 2026-09-01 | 2026-09-14 |
| 3 | 1.2 | Survey & stake out | 2026-09-03 | 2026-09-12 |
| 4 | 1.3 | Site clearing & grubbing | 2026-09-05 | 2026-09-25 |
| 5 | 1.4 | Cut & fill, pemadatan tanah | 2026-09-10 | 2026-10-10 |
| 6 | 1.5 | Site office & laydown area | 2026-09-04 | 2026-09-20 |
| 7 | 2 | **Pondasi tank & equipment** | 2026-09-20 | 2026-11-30 |
| 8 | 2.1 | Pemancangan mini pile | 2026-09-20 | 2026-10-20 |
| 9 | 2.2 | Galian pondasi | 2026-09-25 | 2026-10-15 |
| 10 | 2.3 | Lean concrete | 2026-10-01 | 2026-10-18 |
| 11 | 2.4 | Pembesian pondasi | 2026-10-01 | 2026-11-05 |
| 12 | 2.5 | Bekisting | 2026-10-03 | 2026-11-08 |
| 13 | 2.6 | Pengecoran K-300 | 2026-10-08 | 2026-11-15 |
| 14 | 2.7 | Anchor bolt & grouting | 2026-10-25 | 2026-11-30 |
| 15 | 3 | **Sump pit & oil catcher** | 2026-10-05 | 2026-12-05 |
| 16 | 3.1 | Galian sump pit | 2026-10-05 | 2026-10-20 |
| 17 | 3.2 | Pembesian sump pit | 2026-10-15 | 2026-11-05 |
| 18 | 3.3 | Pengecoran sump pit | 2026-10-22 | 2026-11-15 |
| 19 | 3.4 | Waterproofing & cover grating | 2026-11-10 | 2026-12-05 |
| 20 | 4 | **Bund wall tank area** | 2026-10-15 | 2026-12-20 |
| 21 | 4.1 | Galian bund wall | 2026-10-15 | 2026-11-01 |
| 22 | 4.2 | Pembesian bund wall | 2026-10-25 | 2026-11-25 |
| 23 | 4.3 | Pengecoran bund wall | 2026-11-01 | 2026-12-05 |
| 24 | 4.4 | Coating bund wall | 2026-12-01 | 2026-12-20 |

| ID | WBS | Task | Start | Finish |
| --- | --- | --- | --- | --- |
| 25 | 5 | **Drainage, jalan & paving** | 2026-11-10 | 2027-01-25 |
| 26 | 5.1 | Saluran drainase U-ditch | 2026-11-10 | 2026-12-20 |
| 27 | 5.2 | Lapis base course jalan | 2026-11-20 | 2026-12-30 |
| 28 | 5.3 | Paving / gravel area plant | 2026-12-10 | 2027-01-25 |
| 29 | 6 | **Control room, MCC room & pos jaga** | 2026-10-20 | 2027-02-25 |
| 30 | 6.1 | Pondasi & sloof bangunan | 2026-10-20 | 2026-11-20 |
| 31 | 6.2 | Struktur kolom & balok bangunan | 2026-11-15 | 2026-12-25 |
| 32 | 6.3 | Dinding bata & plester | 2026-12-15 | 2027-01-25 |
| 33 | 6.4 | Atap, plafon & finishing | 2027-01-10 | 2027-02-15 |
| 34 | 6.5 | MEP bangunan (AC, lampu, stop kontak) | 2027-01-25 | 2027-02-25 |
| 35 | 7 | **Tank T-0103** | 2026-10-01 | 2027-02-05 |
| 36 | 7.1 | Fabrikasi plat tank T-0103 | 2026-10-01 | 2026-10-30 |
| 37 | 7.2 | Erection bottom plate T-0103 | 2026-10-20 | 2026-11-05 |
| 38 | 7.3 | Erection shell course 1-3 T-0103 | 2026-11-01 | 2026-11-22 |
| 39 | 7.4 | Erection shell course 4-6 T-0103 | 2026-11-20 | 2026-12-12 |
| 40 | 7.5 | Erection roof plate T-0103 | 2026-12-08 | 2026-12-28 |
| 41 | 7.6 | Nozzle, manhole & appurtenance T-0103 | 2026-12-10 | 2027-01-05 |
| 42 | 7.7 | Radiografi las T-0103 | 2026-11-05 | 2027-01-05 |
| 43 | 7.8 | Hydrotest tank T-0103 | 2027-01-05 | 2027-01-15 |
| 44 | 7.9 | Coating tank T-0103 | 2027-01-10 | 2027-02-05 |
| 45 | 8 | **Tank T-0302** | 2026-10-10 | 2027-02-20 |
| 46 | 8.1 | Fabrikasi plat tank T-0302 | 2026-10-10 | 2026-11-10 |
| 47 | 8.2 | Erection bottom plate T-0302 | 2026-11-01 | 2026-11-18 |
| 48 | 8.3 | Erection shell course 1-3 T-0302 | 2026-11-15 | 2026-12-08 |
| 49 | 8.4 | Erection shell course 4-6 T-0302 | 2026-12-05 | 2026-12-28 |
| 50 | 8.5 | Erection roof plate T-0302 | 2026-12-22 | 2027-01-10 |
| 51 | 8.6 | Nozzle, manhole & appurtenance T-0302 | 2026-12-28 | 2027-01-20 |
| 52 | 8.7 | Radiografi las T-0302 | 2026-11-18 | 2027-01-20 |
| 53 | 8.8 | Hydrotest tank T-0302 | 2027-01-20 | 2027-01-30 |
| 54 | 8.9 | Coating tank T-0302 | 2027-01-25 | 2027-02-20 |

| ID | WBS | Task | Start | Finish |
| --- | --- | --- | --- | --- |
| 55 | 9 | **Surge tank T-0301** | 2026-10-20 | 2027-01-25 |
| 56 | 9.1 | Fabrikasi surge tank T-0301 | 2026-10-20 | 2026-11-15 |
| 57 | 9.2 | Erection surge tank T-0301 | 2026-11-15 | 2026-12-15 |
| 58 | 9.3 | Nozzle & instrument connection T-0301 | 2026-12-10 | 2027-01-05 |
| 59 | 9.4 | Hydrotest & coating T-0301 | 2027-01-05 | 2027-01-25 |
| 60 | 10 | **Vessel V-0103 & filter skid** | 2026-11-20 | 2027-01-25 |
| 61 | 10.1 | Setting vessel V-0103 | 2026-11-20 | 2026-12-10 |
| 62 | 10.2 | Setting filter skid | 2026-12-01 | 2026-12-28 |
| 63 | 10.3 | Nozzle & instrument hook-up vessel | 2026-12-20 | 2027-01-25 |
| 64 | 11 | **Pompa injeksi, transfer & shipping** | 2026-11-10 | 2026-12-28 |
| 65 | 11.1 | Setting pompa injeksi P-2001A/B/C | 2026-11-10 | 2026-12-05 |
| 66 | 11.2 | Setting transfer pump | 2026-11-12 | 2026-12-05 |
| 67 | 11.3 | Setting shipping pump | 2026-11-15 | 2026-12-10 |
| 68 | 11.4 | Setting recycle pump & P-0501 | 2026-11-20 | 2026-12-12 |
| 69 | 11.5 | Grouting & alignment pompa | 2026-12-01 | 2026-12-28 |
| 70 | 12 | **Water tower** | 2026-10-15 | 2026-11-30 |
| 71 | 12.1 | Fabrikasi struktur water tower | 2026-10-15 | 2026-11-10 |
| 72 | 12.2 | Erection water tower | 2026-11-05 | 2026-11-30 |
| 73 | 13 | **Steel structure, platform & stair** | 2026-10-10 | 2027-01-05 |
| 74 | 13.1 | Fabrikasi steel structure | 2026-10-10 | 2026-11-25 |
| 75 | 13.2 | Erection steel structure | 2026-11-01 | 2026-12-20 |
| 76 | 13.3 | Pemasangan grating | 2026-11-25 | 2026-12-28 |
| 77 | 13.4 | Pemasangan handrail & ladder | 2026-12-01 | 2027-01-05 |
| 78 | 14 | **Pipeline Seruni - Sintong** | 2026-09-20 | 2027-01-25 |
| 79 | 14.1 | ROW clearing & survey | 2026-09-20 | 2026-10-25 |
| 80 | 14.2 | Stringing pipa 16"/12" | 2026-10-15 | 2026-11-25 |
| 81 | 14.3 | Welding joint pipeline | 2026-10-25 | 2026-12-20 |
| 82 | 14.4 | NDT radiografi pipeline | 2026-11-01 | 2026-12-28 |
| 83 | 14.5 | Field joint coating | 2026-11-10 | 2027-01-05 |
| 84 | 14.6 | Pipe support & sleeper pipeline | 2026-10-20 | 2026-12-20 |
| 85 | 14.7 | Road / canal crossing | 2026-11-15 | 2027-01-10 |
| 86 | 14.8 | Hydrotest pipeline | 2027-01-05 | 2027-01-25 |

| ID | WBS | Task | Start | Finish |
| --- | --- | --- | --- | --- |
| 87 | 15 | **Piping water injection (WI)** | 2026-10-15 | 2027-01-05 |
| 88 | 15.1 | Fabrikasi spool WI | 2026-10-15 | 2026-11-30 |
| 89 | 15.2 | Welding joint WI | 2026-10-25 | 2026-12-15 |
| 90 | 15.3 | Erection pipa WI | 2026-11-05 | 2026-12-28 |
| 91 | 15.4 | NDT & PWHT WI | 2026-11-10 | 2027-01-05 |
| 92 | 16 | **Piping water well / WW** | 2026-10-20 | 2027-01-05 |
| 93 | 16.1 | Fabrikasi spool WW | 2026-10-20 | 2026-12-05 |
| 94 | 16.2 | Welding joint WW | 2026-10-30 | 2026-12-20 |
| 95 | 16.3 | Erection pipa WW | 2026-11-10 | 2027-01-05 |
| 96 | 17 | **Piping produced fluid / produced water** | 2026-10-25 | 2027-01-10 |
| 97 | 17.1 | Fabrikasi spool PF/PW | 2026-10-25 | 2026-12-10 |
| 98 | 17.2 | Welding joint PF/PW | 2026-11-05 | 2026-12-28 |
| 99 | 17.3 | Erection pipa PF/PW | 2026-11-15 | 2027-01-10 |
| 100 | 18 | **Piping utility (NG, SO, drain)** | 2026-11-01 | 2027-01-15 |
| 101 | 18.1 | Fabrikasi spool utility | 2026-11-01 | 2026-12-15 |
| 102 | 18.2 | Erection pipa utility | 2026-11-20 | 2027-01-15 |
| 103 | 19 | **Tie-in & modifikasi line existing** | 2026-11-15 | 2027-01-25 |
| 104 | 19.1 | Persiapan tie-in & hot tap | 2026-11-15 | 2026-12-20 |
| 105 | 19.2 | Modifikasi line existing | 2026-12-01 | 2027-01-15 |
| 106 | 19.3 | Shutdown tie-in | 2027-01-15 | 2027-01-25 |
| 107 | 20 | **Pipe support onplot** | 2026-10-05 | 2026-12-28 |
| 108 | 20.1 | Pondasi pipe support | 2026-10-05 | 2026-11-10 |
| 109 | 20.2 | Fabrikasi pipe support | 2026-10-15 | 2026-11-30 |
| 110 | 20.3 | Pemasangan pipe support | 2026-10-30 | 2026-12-28 |

| ID | WBS | Task | Start | Finish |
| --- | --- | --- | --- | --- |
| 111 | 21 | **Electrical & transformer yard** | 2026-11-01 | 2027-01-25 |
| 112 | 21.1 | Pondasi & setting transformer | 2026-11-01 | 2026-11-30 |
| 113 | 21.2 | Cable tray & ladder | 2026-11-15 | 2026-12-28 |
| 114 | 21.3 | Penarikan kabel power & kontrol | 2026-12-01 | 2027-01-20 |
| 115 | 21.4 | Grounding system | 2026-11-20 | 2026-12-30 |
| 116 | 21.5 | Lampu penerangan area | 2026-12-15 | 2027-01-25 |
| 117 | 22 | **Safety equipment** | 2026-12-15 | 2027-01-25 |
| 118 | 22.1 | Safety shower & eye wash | 2026-12-15 | 2027-01-15 |
| 119 | 22.2 | APAR & fire box | 2027-01-05 | 2027-01-25 |
| 120 | 23 | **Pre-commissioning** | 2026-12-28 | 2027-02-26 |
| 121 | 23.1 | Hydrotest system piping | 2026-12-28 | 2027-02-05 |
| 122 | 23.2 | Flushing & drying | 2027-01-25 | 2027-02-15 |
| 123 | 23.3 | Punch list & mechanical completion | 2027-02-05 | 2027-02-26 |
